# Nuevo Gantt Glow Girl

How a schedule from MS Project changed from version to version. A marks actual dates.

## Version 1 (saved 2026-09-17)

Note of the change: despliegue

| ID | WBS | Task | Duration | Start | Finish | Predecessors | Complete | Total float | Constraint |
| --- | --- | --- | --- | --- | --- | --- | --- | --- | --- |
| 1 | 1 | **ANÁLISIS** | 23d | 2026-07-21 A | 2026-08-19 A |  | 100% |  |  |
| 2 |  | Entrevista con el cliente | 2d | 2026-07-21 A | 2026-07-22 A |  | 100% |  | finish no earlier than 2026-07-22 |
| 3 |  | Recolección de información | 5d | 2026-07-23 A | 2026-07-29 A | 2 | 100% |  | finish no earlier than 2026-07-29 |
| 4 |  | Análisis de la información | 4d | 2026-07-30 A | 2026-08-04 A | 3 | 100% |  | finish no earlier than 2026-08-04 |
| 5 |  | Definición de objetivos del proyecto | 4d | 2026-08-05 A | 2026-08-10 A |  | 100% |  | finish no earlier than 2026-08-10 |
| 6 |  | Identificación y análisis del problema | 3d | 2026-08-11 A | 2026-08-13 A | 5 | 100% |  | finish no earlier than 2026-08-13 |
| 7 |  | Definición del alcance | 2d | 2026-08-15 A | 2026-08-17 A |  | 100% |  | finish no earlier than 2026-08-17 |
| 8 |  | Requerimientos funcionales | 1d | 2026-08-18 A | 2026-08-18 A |  | 100% |  | start no earlier than 2026-08-18 |
| 9 |  | Requerimientos no funcionales | 1d | 2026-08-19 A | 2026-08-19 A |  | 100% |  | start no earlier than 2026-08-19 |
| 10 | 2 | **DISEÑO** | 24d | 2026-08-20 A | 2026-09-21 |  | 83% | 50d |  |
| 11 |  | Diseño de arquitectura del sistema | 4d | 2026-08-20 A | 2026-08-25 A |  | 100% |  | start no earlier than 2026-08-20 |
| 12 |  | Diagrama de casos de uso | 3d | 2026-08-26 A | 2026-08-28 A |  | 100% |  | finish no earlier than 2026-08-28 |
| 13 |  | Diagrama de clases | 3d | 2026-08-31 A | 2026-09-02 A |  | 100% |  | finish no earlier than 2026-09-02 |
| 14 |  | Diagrama de componentes | 2d | 2026-09-03 A | 2026-09-04 A |  | 100% |  | finish no earlier than 2026-09-04 |
| 15 |  | Diagrama de despliegue | 2d | 2026-09-07 A | 2026-09-08 A |  | 100% |  | finish no earlier than 2026-09-08 |
| 16 |  | Diseño de base de datos | 4d | 2026-09-09 A | 2026-09-14 A |  | 100% |  | finish no earlier than 2026-09-14 |
| 17 |  | Diseño de interfaces / prototipo | 6d | 2026-09-15 A | 2026-09-21 |  | 33% | 50d | finish no earlier than 2026-09-21 |
| 18 | 3 | **DESARROLLO** | 32d | 2026-09-17 | 2026-10-29 |  |  | 22d |  |
| 19 |  | Configuración del entorno | 1d | 2026-09-17 | 2026-09-17 |  |  | 53d |  |
| 20 |  | Desarrollo de base de datos | 3d | 2026-10-05 | 2026-10-07 |  |  | 38d | finish no earlier than 2026-10-07 |
| 21 |  | Desarrollo Backend | 7d | 2026-10-08 | 2026-10-16 |  |  | 31d | finish no earlier than 2026-10-16 |
| 22 |  | Desarrollo Frontend | 7d | 2026-10-08 | 2026-10-16 |  |  | 31d | finish no earlier than 2026-10-16 |
| 23 |  | Integración Backend + Frontend | 4d | 2026-10-19 | 2026-10-22 |  |  | 27d | finish no earlier than 2026-10-22 |
| 24 |  | Implementación de funcionalidades | 5d | 2026-10-23 | 2026-10-29 |  |  | 22d | finish no earlier than 2026-10-29 |
| 25 | 4 | **PRUEBAS** | 12d | 2026-10-30 | 2026-11-16 |  |  | 10d |  |
| 26 |  | Diseño de casos de prueba | 2d | 2026-10-30 | 2026-11-02 |  |  | 20d | start no earlier than 2026-10-30 |
| 27 |  | Pruebas unitarias | 2d | 2026-11-03 | 2026-11-04 |  |  | 18d | finish no earlier than 2026-11-04 |
| 28 |  | Pruebas de integración | 2d | 2026-11-05 | 2026-11-06 |  |  | 16d | finish no earlier than 2026-11-06 |
| 29 |  | Pruebas funcionales | 2d | 2026-11-09 | 2026-11-10 |  |  | 14d | finish no earlier than 2026-11-10 |
| 30 |  | Pruebas de rendimiento | 1d | 2026-11-11 | 2026-11-11 |  |  | 13d | start no earlier than 2026-11-11 |
| 31 |  | Corrección de errores | 2d | 2026-11-12 | 2026-11-13 |  |  | 11d | finish no earlier than 2026-11-13 |
| 32 |  | Validación con usuarios | 1d | 2026-11-16 | 2026-11-16 |  |  | 10d | start no earlier than 2026-11-16 |
| 33 | 5 | **DESPLIEGUE** | 10d | 2026-11-17 | 2026-11-30 |  |  |  |  |
| 34 |  | Configuración del servidor | 1d | 2026-11-17 | 2026-11-17 |  |  | 9d |  |
| 35 |  | Configuración de base de datos | 1d | 2026-11-18 | 2026-11-18 |  |  | 8d | start no earlier than 2026-11-18 |
| 36 |  | Configuración Backend | 1d | 2026-11-19 | 2026-11-19 |  |  | 7d | start no earlier than 2026-11-19 |
| 37 |  | Configuración Frontend | 1d | 2026-11-20 | 2026-11-20 |  |  | 6d | start no earlier than 2026-11-20 |
| 38 |  | Integración y publicación | 2d | 2026-11-23 | 2026-11-24 |  |  | 4d | finish no earlier than 2026-11-24 |
| 39 |  | Verificación en producción | 1d | 2026-11-25 | 2026-11-25 |  |  | 3d | start no earlier than 2026-11-25 |
| 40 |  | Ajustes finales | 2d | 2026-11-26 | 2026-11-27 |  |  | 1d | finish no earlier than 2026-11-27 |
| 41 |  | Entrega del proyecto | 1d | 2026-11-30 | 2026-11-30 |  |  | 0d | start no earlier than 2026-11-30 |

## Version 2 (saved 2026-09-21)

Note of the change: Gantt

Last finish 2026-11-30 → 2027-04-06 (+127d). Complete tasks 14 → 15.

Changed:

| ID | Task | Start | Finish | Duration | Complete | Total float | Predecessors | Other |
| --- | --- | --- | --- | --- | --- | --- | --- | --- |
| 5 | Definición de objetivos del proyecto |  |  |  |  |  | none → 4 |  |
| 7 | Definición del alcance |  |  |  |  |  | none → 6 |  |
| 8 | Requerimientos funcionales |  |  |  |  |  | none → 7 |  |
| 9 | Requerimientos no funcionales |  |  |  |  |  | none → 8 |  |
| 10 | **DISEÑO** |  |  |  | 83% → 96% | 50d → 121d |  |  |
| 11 | Diseño de arquitectura del sistema |  |  |  |  |  | none → 9 |  |
| 12 | Diagrama de casos de uso |  |  |  |  |  | none → 11 |  |
| 13 | Diagrama de clases |  |  |  |  |  | none → 12 |  |
| 14 | Diagrama de componentes |  |  |  |  |  | none → 13 |  |
| 15 | Diagrama de despliegue |  |  |  |  |  | none → 14 |  |
| 16 | Diseño de base de datos |  |  |  |  |  | none → 15 |  |
| 17 | Diseño de interfaces / prototipo |  |  |  | 33% → 83% | 50d → 121d | none → 16 |  |
| 18 | **DESARROLLO** | 2026-09-17 → 2026-09-22 A (+5d) | 2026-10-29 → 2027-02-05 (+99d) | 32d → 99d | 0% → 14% | 22d → none |  |  |
| 19 | Configuración del entorno | 2026-09-17 → 2026-09-22 A (+5d) | 2026-09-17 → 2026-09-22 A (+5d) |  | 0% → 100% | 53d → none | none → 17 |  |
| 20 | Desarrollo de base de datos | 2026-10-05 → 2026-09-23 A (-12d) | 2026-10-07 → 2026-12-29 (+83d) | 3d → 70d | 0% → 3% | 38d → 70d | none → 19 | resources Desarrollador Backend → Desarrollador Backend [10%] |
| 21 | Desarrollo Backend | 2026-10-08 → 2026-09-23 A (-15d) | 2026-10-16 → 2026-12-29 (+74d) | 7d → 70d | 0% → 3% | 31d → 70d | none → 19 | resources Desarrollador Backend → Desarrollador Backend [80%] |
| 22 | Desarrollo Frontend | 2026-10-08 → 2026-09-23 A (-15d) | 2026-10-16 → 2026-12-29 (+74d) | 7d → 70d | 0% → 3% | 31d → 70d | none → 19 | resources Desarrollador Frontend → Desarrollador Frontend [90%] |
| 23 | Integración Backend + Frontend | 2026-10-19 → 2026-09-23 A (-26d) | 2026-10-22 → 2026-11-17 (+26d) | 4d → 40d | 0% → 5% | 27d → 0d | none → 19 | resources Desarrollador Backend; Desarrollador Frontend → Desarrollador Backend [5%]; Desarrollador Frontend [5%] |
| 24 | Implementación de funcionalidades | 2026-10-23 → 2026-09-23 A (-30d) | 2026-10-29 → 2026-11-30 (+32d) | 5d → 40d | 0% → 78% | 22d → 91d | none → 23 | resources Desarrollador Backend; Desarrollador Frontend → Desarrollador Backend [5%]; Desarrollador Frontend [5%] |
| 25 | **PRUEBAS** | 2026-10-30 → 2027-02-08 (+101d) | 2026-11-16 → 2027-02-23 (+99d) |  |  | 10d → none |  |  |
| 26 | Diseño de casos de prueba | 2026-10-30 → 2027-02-08 (+101d) | 2026-11-02 → 2027-02-09 (+99d) |  |  | 20d → 22d | none → 17 | constraint start no earlier than 2026-10-30 → start no earlier than 2027-02-08 |
| 27 | Pruebas unitarias | 2026-11-03 → 2027-02-11 (+100d) | 2026-11-04 → 2027-02-11 (+99d) | 2d → 1d |  | 18d → 38d | none → 26 | constraint finish no earlier than 2026-11-04 → start no earlier than 2027-02-11; resources Desarrollador Backend; Desarrollador Frontend → Tester |
| 28 | Pruebas de integración | 2026-11-05 → 2027-02-12 (+99d) | 2026-11-06 → 2027-02-15 (+101d) |  |  | 16d → 20d | none → 26 | constraint finish no earlier than 2026-11-06 → start no earlier than 2027-02-12 |
| 29 | Pruebas funcionales | 2026-11-09 → 2027-02-16 (+99d) | 2026-11-10 → 2027-02-17 (+99d) |  |  | 14d → 20d | none → 28 |  |
| 30 | Pruebas de rendimiento | 2026-11-11 → 2027-02-18 (+99d) | 2026-11-11 → 2027-02-18 (+99d) |  |  | 13d → 20d | none → 29 |  |
| 31 | Corrección de errores | 2026-11-12 → 2027-02-19 (+99d) | 2026-11-13 → 2027-02-22 (+101d) |  |  | 11d → 20d | none → 30 |  |
| 32 | Validación con usuarios | 2026-11-16 → 2027-02-23 (+99d) | 2026-11-16 → 2027-02-23 (+99d) |  |  | 10d → 20d | none → 31 |  |
| 33 | **DESPLIEGUE** | 2026-11-17 → 2027-03-24 (+127d) | 2026-11-30 → 2027-04-06 (+127d) |  |  |  |  |  |
| 34 | Configuración del servidor | 2026-11-17 → 2027-03-24 (+127d) | 2026-11-17 → 2027-03-24 (+127d) |  |  | 9d → 0d | none → 32 |  |
| 35 | Configuración de base de datos | 2026-11-18 → 2027-03-25 (+127d) | 2026-11-18 → 2027-03-25 (+127d) |  |  | 8d → 0d | none → 34 |  |
| 36 | Configuración Backend | 2026-11-19 → 2027-03-26 (+127d) | 2026-11-19 → 2027-03-26 (+127d) |  |  | 7d → 0d | none → 35 |  |
| 37 | Configuración Frontend | 2026-11-20 → 2027-03-29 (+129d) | 2026-11-20 → 2027-03-29 (+129d) |  |  | 6d → 0d | none → 36 |  |
| 38 | Integración y publicación | 2026-11-23 → 2027-03-30 (+127d) | 2026-11-24 → 2027-03-31 (+127d) |  |  | 4d → 0d | none → 37 |  |
| 39 | Verificación en producción | 2026-11-25 → 2027-04-01 (+127d) | 2026-11-25 → 2027-04-01 (+127d) |  |  | 3d → 0d | none → 38 |  |
| 40 | Ajustes finales | 2026-11-26 → 2027-04-02 (+127d) | 2026-11-27 → 2027-04-05 (+129d) |  |  | 1d → 0d | none → 39 |  |
| 41 | Entrega del proyecto | 2026-11-30 → 2027-04-06 (+127d) | 2026-11-30 → 2027-04-06 (+127d) |  |  |  | none → 40 |  |
